# UNO Práctica

Schedule from MS Project, 2017-08-01 to 2018-12-19, costs in €, A marks actual dates.
SIMA S.A

## Calendars

- SIMACALENDAR: Mon 13:00-17:00; Tue-Fri 08:00-14:00; Sat-Sun off.

## Resources

| Resource | Rate |
| --- | --- |
| Analista de Sistemas | 61.8 |
| Especificador de Casos de Uso | 46.35 |
| Diseñador de Interfaz de Usuario | 41.2 |
| Arquitecto | 56.65 |
| Ingeniero de Casos de Uso | 51.5 |
| Ingeniero de Componentes | 56.65 |
| HW para la Implementación |  |
| Licencias de Software |  |
| Gastos de Representación y Viáticos |  |
| Administrador de Proyecto | 72.1 |
| Implementador | 51.5 |
| Gestor de BD | 56.65 |

## Schedule

| ID | WBS | Task | Type | Duration | Start | Finish | Predecessors | Baseline start | Baseline finish | Baseline duration | Total slack | Free slack | Constraint | Resources | Work | Cost | Baseline cost |
| --- | --- | --- | --- | --- | --- | --- | --- | --- | --- | --- | --- | --- | --- | --- | --- | --- | --- |
| 1 | 1 | **Hitos del Proyecto** |  | 248.46d | 2017-08-01 | 2018-12-11 |  | 2017-11-10 | 2019-03-26 | 250.42d | 4.25d |  |  |  |  |  |  |
| 2 | 1.1 | Inicio del Proyecto | milestone | 0d | 2017-08-01 | 2017-08-01 |  | 2017-11-10 | 2017-11-10 | 0d | 252.71d |  |  |  |  |  |  |
| 3 | 1.2 | Definición del Sistema | milestone | 0d | 2017-08-21 | 2017-08-21 | 11 | 2017-11-22 | 2017-11-22 | 0d | 243.08d |  |  |  |  |  |  |
| 4 | 1.3 | 1era Entrega Operativa de Software | milestone | 0d | 2018-03-23 | 2018-03-23 | 128 | 2018-06-26 | 2018-06-26 | 0d | 135.42d |  |  |  |  |  |  |
| 5 | 1.4 | 2a Entrega Operativa de Software | milestone | 0d | 2018-05-28 | 2018-05-28 | 184 | 2018-08-29 | 2018-08-29 | 0d | 103.08d |  |  |  |  |  |  |
| 6 | 1.5 | 3era Entrega Operativa de Software | milestone | 0d | 2018-10-25 | 2018-10-25 | 241 | 2019-01-28 | 2019-01-28 | 0d | 27.75d |  |  |  |  |  |  |
| 7 | 1.6 | 4a Entrega Operativa de Software | milestone | 0d | 2018-12-07 | 2018-12-07 | 285 | 2019-03-13 | 2019-03-13 | 0d | 5.42d |  |  |  |  |  |  |
| 8 | 1.7 | Fin del Proyecto | milestone | 0d | 2018-12-11 | 2018-12-11 | 295 | 2019-03-26 | 2019-03-26 | 0d | 4.25d |  |  |  |  |  |  |
| 10 | 2 | **Fase Inicial** |  | 9.62d | 2017-08-01 | 2017-08-21 |  | 2017-11-10 | 2017-12-01 | 10.75d | 3.43d |  |  |  | 229h | 16,391.95 | 15,186.85 |
| 11 | 2.1 | **Workflow de Requisitos** |  | 9.62d | 2017-08-01 | 2017-08-21 |  | 2017-11-10 | 2017-11-22 | 6d | 0.56d | 0d |  | Gastos de Representación y Viáticos | 141h | 10,461.9 | 9,256.8 |
| 12 | 2.1.1 | **Analizar el Problema** |  | 5.88d | 2017-08-01 | 2017-08-11 |  | 2017-11-10 | 2017-11-17 | 4d | 4.31d |  |  |  | 79h | 4,882.2 | 3,955.2 |
| 13 | 2.1.1.1 | Glorario de Términos |  | 1d | 2017-08-01 | 2017-08-03 |  | 2017-11-10 | 2017-11-13 | 1d | 9.18d |  |  | Analista de Sistemas | 8h | 494.4 | 494.4 |
| 14 | 2.1.1.2 | Identificar Actores |  | 3d | 2017-08-01 | 2017-08-08 |  | 2017-11-10 | 2017-11-16 | 3d | 7.18d | 2.88d |  | Analista de Sistemas | 24h | 1,483.2 | 1,483.2 |
| 15 | 2.1.1.3 | Identificar Casos de Uso |  | 5.88d | 2017-08-01 | 2017-08-11 | 14FF | 2017-11-10 | 2017-11-17 | 4d | 4.31d |  | finish no earlier than 2017-08-11 | Analista de Sistemas | 47h | 2,904.6 | 1,977.6 |
| 16 | 2.1.2 | **Definición del Sistema** |  | 5.75d | 2017-08-08 | 2017-08-17 |  | 2017-11-10 | 2017-11-21 | 5d | 0.56d |  |  |  | 46h | 2,132.1 | 1,854 |
| 17 | 2.1.2.1 | Estructurar Modelo Casos de Uso |  | 5.75d | 2017-08-08 | 2017-08-17 |  | 2017-11-10 | 2017-11-21 | 5d | 0.56d | 0d | finish no earlier than 2017-08-17 | Especificador de Casos de Uso | 46h | 2,132.1 | 1,854 |
| 18 | 2.1.3 | **Definición de Alcance** |  | 1d | 2017-08-18 | 2017-08-21 |  | 2017-11-21 | 2017-11-22 | 1d | 0.56d |  |  |  | 8h | 453.2 | 453.2 |
| 19 | 2.1.3.1 | Priorizar Casos de Uso |  | 1d | 2017-08-18 | 2017-08-21 | 17 | 2017-11-21 | 2017-11-22 | 1d | 0.56d |  |  | Arquitecto | 8h | 453.2 | 453.2 |
| 20 | 2.1.4 | Administración de Cambios de Requisitos |  | 1d | 2017-08-01 | 2017-08-04 |  | 2017-11-13 | 2017-11-14 | 1d | 8.31d |  |  | Analista de Sistemas | 8h | 494.4 | 494.4 |
| 21 | 2.2 | **Workflow Administración de la Configuración** |  | 6d | 2017-08-07 | 2017-08-17 |  | 2017-11-22 | 2017-12-01 | 5d | 244.33d |  |  |  | 40h | 2,702.72 | 2,702.72 |
| 22 | 2.2.1 | Establecer el Proceso de Admon de la Configuración |  | 1d | 2017-08-11 | 2017-08-14 |  | 2017-11-22 | 2017-11-23 | 1d | 246.33d |  |  | Administrador de Proyecto [66.7%]; Analista de Sistemas [66.7%] | 8h | 549.33 | 549.33 |
| 23 | 2.2.2 | Establecer el Entorno de Admon de la Configuración |  | 6d | 2017-08-07 | 2017-08-17 |  | 2017-11-23 | 2017-12-01 | 4d | 244.33d |  |  | Administrador de Proyecto [53.3%]; Analista de Sistemas [53.3%] | 32h | 2,153.39 | 2,153.39 |
| 24 | 2.3 | **Workflow Administración del Proyecto** |  | 6d | 2017-08-04 | 2017-08-16 |  | 2017-11-15 | 2017-11-27 | 6d | 244.83d |  |  |  | 48h | 3,227.33 | 3,227.33 |
| 25 | 2.3.1 | Análisis de Riesgos |  | 5d | 2017-08-07 | 2017-08-16 | 26 | 2017-11-16 | 2017-11-27 | 5d | 244.83d |  |  | Administrador de Proyecto [50%]; Analista de Sistemas [50%] | 40h | 2,678 | 2,678 |
| 26 | 2.3.2 | Desarrollar la Planificación del Proyecto |  | 1d | 2017-08-04 | 2017-08-07 |  | 2017-11-15 | 2017-11-16 | 1d | 244.83d | 0d |  | Administrador de Proyecto [66.7%]; Analista de Sistemas [66.7%] | 8h | 549.33 | 549.33 |

| ID | WBS | Task | Duration | Start | Finish | Predecessors | Complete | Remaining | Baseline start | Baseline finish | Baseline duration | Total slack | Free slack | Resources | Work | Actual work | Cost | Baseline cost | Actual cost |
| --- | --- | --- | --- | --- | --- | --- | --- | --- | --- | --- | --- | --- | --- | --- | --- | --- | --- | --- | --- |
| 27 | 3 | **Fase de Elaboración** | 140d | 2017-08-21 A | 2018-05-28 | 11 |  | 139.44d | 2017-11-22 | 2018-08-29 | 140d | 0d |  |  | 3008h | 12h | 170,358.9 | 170,358.9 | 556.2 |
| 28 | 3.1 | **Iteración 1** | 56.33d | 2017-08-21 A | 2017-12-12 |  | 1% | 55.56d | 2017-11-22 | 2018-03-15 | 56.33d | 83.67d |  |  | 816h | 12h | 52,506.3 | 52,506.3 | 556.2 |
| 29 | 3.1.1 | **Workflow de Requisitos** | 10d | 2017-08-21 A | 2017-09-08 |  | 8% | 9.25d | 2017-11-22 | 2017-12-12 | 10d | 0d |  |  | 160h | 12h | 7,488.1 | 7,488.1 | 556.2 |
| 30 | 3.1.1.1 | **Analizar el Problema** | 0.5d | 2017-08-21 | 2017-08-22 |  |  |  | 2017-11-22 | 2017-11-23 | 0.5d | 9.5d |  |  | 4h |  | 247.2 | 247.2 |  |
| 31 | 3.1.1.1.1 | Glorario de Términos | 0.5d | 2017-08-21 | 2017-08-22 |  |  |  | 2017-11-22 | 2017-11-23 | 0.5d | 9.5d |  | Analista de Sistemas | 4h |  | 247.2 | 247.2 |  |
| 32 | 3.1.1.2 | **Definición del Sistema** | 6d | 2017-08-21 | 2017-08-31 |  |  |  | 2017-11-22 | 2017-12-05 | 6d | 1.5d |  |  | 88h |  | 3,934.6 | 3,934.6 |  |
| 33 | 3.1.1.2.1 | Detallar Casos de Uso | 5d | 2017-08-21 | 2017-08-30 |  |  |  | 2017-11-22 | 2017-12-01 | 5d | 1.5d | 0d | Especificador de Casos de Uso [50%]; Implementador [50%] | 40h |  | 1,957 | 1,957 |  |
| 34 | 3.1.1.2.2 | Prototipar Casos de Uso | 6d | 2017-08-21 | 2017-08-31 |  |  |  | 2017-11-22 | 2017-12-05 | 6d | 4d |  | Diseñador de Interfaz de Usuario | 48h |  | 1,977.6 | 1,977.6 |  |
| 35 | 3.1.1.3 | **Definición de Alcance** | 0.5d | 2017-08-21 | 2017-08-22 |  |  |  | 2017-11-22 | 2017-11-23 | 0.5d | 9.5d |  |  | 4h |  | 226.6 | 226.6 |  |
| 36 | 3.1.1.3.1 | Priorizar Casos de Uso | 0.5d | 2017-08-21 | 2017-08-22 |  |  |  | 2017-11-22 | 2017-11-23 | 0.5d | 9.5d |  | Arquitecto | 4h |  | 226.6 | 226.6 |  |
| 37 | 3.1.1.4 | **Refinar la Definición del Sistema** | 10d | 2017-08-21 A | 2017-09-08 |  | 20% | 8d | 2017-11-22 | 2017-12-12 | 10d | 0d |  |  | 60h | 12h | 2,832.5 | 2,832.5 | 556.2 |
| 38 | 3.1.1.4.1 | Refinar Casos de Uso | 5d | 2017-08-30 A | 2017-09-08 | 33 | 30% | 3.5d | 2017-12-01 | 2017-12-12 | 5d | 0d |  | Especificador de Casos de Uso | 40h | 12h | 1,854 | 1,854 | 556.2 |
| 39 | 3.1.1.4.2 | Refinar Modelo de Caso de Uso | 2.5d | 2017-08-21 | 2017-08-24 |  |  |  | 2017-11-22 | 2017-11-28 | 2.5d | 7d | 0d | Especificador de Casos de Uso [50%]; Implementador [50%] | 20h |  | 978.5 | 978.5 |  |
| 40 | 3.1.1.5 | Administración de Cambios de Requisitos | 0.5d | 2017-08-25 | 2017-08-25 | 39 |  |  | 2017-11-28 | 2017-11-28 | 0.5d | 7d |  | Analista de Sistemas | 4h |  | 247.2 | 247.2 |  |
| 41 | 3.1.2 | **Workflow de Análisis** | 22.33d | 2017-09-08 | 2017-10-24 | 29 |  |  | 2017-12-13 | 2018-01-25 | 22.33d | 0d |  |  | 240h |  | 12,895.6 | 12,895.6 |  |
| 42 | 3.1.2.1 | **Análisis del Comportamiento** | 22.33d | 2017-09-08 | 2017-10-24 |  |  |  | 2017-12-13 | 2018-01-25 | 22.33d | 0d |  |  | 240h |  | 12,895.6 | 12,895.6 |  |
| 43 | 3.1.2.1.1 | **Análisis de la Arquitectura** | 7d | 2017-09-08 | 2017-09-22 |  |  |  | 2017-12-13 | 2017-12-26 | 7d | 0d |  |  | 56h |  | 3,172.4 | 3,172.4 |  |
| 44 | 3.1.2.1.1.1 | Identifica Clases de Análisis | 5d | 2017-09-08 | 2017-09-19 | 17FS-3d |  |  | 2017-12-13 | 2017-12-21 | 5d | 0d |  | Arquitecto | 40h |  | 2,266 | 2,266 |  |
| 45 | 3.1.2.1.1.2 | Identificar Paquetes de Análisis | 2d | 2017-09-20 | 2017-09-22 | 44 |  |  | 2017-12-22 | 2017-12-26 | 2d | 15.33d |  | Arquitecto | 16h |  | 906.4 | 906.4 |  |
| 46 | 3.1.2.1.2 | **Análisis de Casos de Uso** | 13.33d | 2017-09-18 | 2017-10-13 |  |  |  | 2017-12-20 | 2018-01-16 | 13.33d | 0d |  |  | 112h |  | 5,768 | 5,768 |  |
| 47 | 3.1.2.1.2.1 | Diagramas de Clases de Análisis | 10d | 2017-09-18 | 2017-10-06 | 44FS-1d |  |  | 2017-12-20 | 2018-01-09 | 10d | 3.33d | 0d | Ingeniero de Casos de Uso | 48h |  | 2,472 | 2,472 |  |
| 48 | 3.1.2.1.2.2 | Diagramas de Colaboración | 13.33d | 2017-09-18 | 2017-10-13 | 44FS-1d |  |  | 2017-12-20 | 2018-01-16 | 13.33d | 0d |  | Ingeniero de Casos de Uso | 64h |  | 3,296 | 3,296 |  |
| 49 | 3.1.2.1.3 | **Análisis de Paquetes** | 1d | 2017-10-13 | 2017-10-17 |  |  |  | 2018-01-16 | 2018-01-18 | 1d | 2d |  |  | 8h |  | 453.2 | 453.2 |  |
| 50 | 3.1.2.1.3.1 | Paquetes de Análisis | 1d | 2017-10-13 | 2017-10-17 | 47, 48 |  |  | 2018-01-16 | 2018-01-18 | 1d | 2d | 0d | Ingeniero de Componentes | 8h |  | 453.2 | 453.2 |  |

| ID | WBS | Task | Duration | Start | Finish | Predecessors | Baseline start | Baseline finish | Baseline duration | Total slack | Free slack | Resources | Work | Cost | Baseline cost |
| --- | --- | --- | --- | --- | --- | --- | --- | --- | --- | --- | --- | --- | --- | --- | --- |
| 51 | 3.1.2.1.4 | **Análisis de Datos** | 3d | 2017-10-13 | 2017-10-19 |  | 2018-01-16 | 2018-01-23 | 3d | 0d |  |  | 24h | 1,359.6 | 1,359.6 |
| 52 | 3.1.2.1.4.1 | Análisis de la BD | 3d | 2017-10-13 | 2017-10-19 | 47, 48 | 2018-01-16 | 2018-01-23 | 3d | 0d |  | Gestor de BD | 24h | 1,359.6 | 1,359.6 |
| 53 | 3.1.2.1.5 | **Refinar el Análisis** | 7.33d | 2017-10-10 | 2017-10-24 |  | 2018-01-11 | 2018-01-25 | 7.33d | 0d |  |  | 40h | 2,142.4 | 2,142.4 |
| 54 | 3.1.2.1.5.1 | Refinar Diagramas de Clases de Análisis | 1.67d | 2017-10-10 | 2017-10-12 | 47FS+1d | 2018-01-11 | 2018-01-15 | 1.67d | 5.67d |  | Ingeniero de Casos de Uso | 8h | 412 | 412 |
| 55 | 3.1.2.1.5.2 | Refinar Diagramas de Colaboración | 3.33d | 2017-10-17 | 2017-10-23 | 48FS+1d | 2018-01-18 | 2018-01-24 | 3.33d | 0.67d |  | Ingeniero de Casos de Uso | 16h | 824 | 824 |
| 56 | 3.1.2.1.5.3 | Refinar BD | 1d | 2017-10-23 | 2017-10-24 | 52FS+1d | 2018-01-24 | 2018-01-25 | 1d | 0d |  | Gestor de BD | 8h | 453.2 | 453.2 |
| 57 | 3.1.2.1.5.4 | Refinar Paquetes de Análisis | 1d | 2017-10-18 | 2017-10-19 | 50FS+1d | 2018-01-19 | 2018-01-23 | 1d | 2d |  | Ingeniero de Componentes | 8h | 453.2 | 453.2 |
| 58 | 3.1.3 | **Workflow de Diseño** | 24d | 2017-10-24 | 2017-12-12 | 41 | 2018-01-25 | 2018-03-15 | 24d | 83.67d |  | HW para la Implementación; Licencias de Software | 416h | 32,122.6 | 32,122.6 |
| 59 | 3.1.3.1 | **Diseño de la Arquitectura** | 6d | 2017-10-24 | 2017-11-06 |  | 2018-01-25 | 2018-02-07 | 6d | 83.67d |  |  | 72h | 4,449.6 | 4,449.6 |
| 60 | 3.1.3.1.1 | Identifica Clases de Diseño | 6d | 2017-10-24 | 2017-11-06 | 54, 55 | 2018-01-25 | 2018-02-07 | 6d | 83.67d | 0d | Arquitecto | 48h | 2,966.4 | 2,966.4 |
| 61 | 3.1.3.1.2 | Identificar Paquetes de Diseño | 3d | 2017-10-24 | 2017-10-31 | 54, 55 | 2018-01-25 | 2018-02-01 | 3d | 104.67d |  | Arquitecto | 24h | 1,483.2 | 1,483.2 |
| 62 | 3.1.3.2 | **Diseño de Casos de Uso** | 13d | 2017-11-06 | 2017-11-30 |  | 2018-02-07 | 2018-03-06 | 13d | 83.67d |  |  | 216h | 12,236.4 | 12,236.4 |
| 63 | 3.1.3.2.1 | Diagramas de Clases de Diseño | 9d | 2017-11-06 | 2017-11-23 | 60 | 2018-02-07 | 2018-02-26 | 9d | 87.67d | 0d | Ingeniero de Casos de Uso [50%]; Analista de Sistemas [50%] | 72h | 4,078.8 | 4,078.8 |
| 64 | 3.1.3.2.2 | Diagramas de Colaboración | 13d | 2017-11-06 | 2017-11-30 | 60 | 2018-02-07 | 2018-03-06 | 13d | 83.67d | 0d | Ingeniero de Casos de Uso [50%]; Analista de Sistemas [50%] | 104h | 5,891.6 | 5,891.6 |
| 65 | 3.1.3.2.3 | Diagrama de Despliegue | 3d | 2017-11-06 | 2017-11-10 | 60 | 2018-02-07 | 2018-02-13 | 3d | 98.17d | 0d | Ingeniero de Casos de Uso [50%]; Analista de Sistemas [50%] | 24h | 1,359.6 | 1,359.6 |
| 66 | 3.1.3.2.4 | Diagramas de Estado | 2d | 2017-11-06 | 2017-11-09 | 60 | 2018-02-07 | 2018-02-12 | 2d | 98.67d | 0d | Ingeniero de Casos de Uso [50%]; Analista de Sistemas [50%] | 16h | 906.4 | 906.4 |
| 67 | 3.1.3.3 | **Diseño de Paquetes** | 2d | 2017-11-30 | 2017-12-05 |  | 2018-03-06 | 2018-03-08 | 2d | 86.17d |  |  | 16h | 906.4 | 906.4 |
| 68 | 3.1.3.3.1 | Paquetes de Diseño | 2d | 2017-11-30 | 2017-12-05 | 63, 64 | 2018-03-06 | 2018-03-08 | 2d | 86.17d | 0d | Ingeniero de Componentes | 16h | 906.4 | 906.4 |
| 69 | 3.1.3.4 | **Diseño de Datos** | 3d | 2017-11-30 | 2017-12-07 |  | 2018-03-06 | 2018-03-12 | 3d | 83.67d |  |  | 24h | 1,359.6 | 1,359.6 |
| 70 | 3.1.3.4.1 | Diseño de la BD | 3d | 2017-11-30 | 2017-12-07 | 63, 64 | 2018-03-06 | 2018-03-12 | 3d | 83.67d | 0d | Gestor de BD | 24h | 1,359.6 | 1,359.6 |
| 71 | 3.1.3.5 | **Refinar el Diseño** | 16d | 2017-11-09 | 2017-12-12 |  | 2018-02-12 | 2018-03-15 | 16d | 83.67d |  |  | 88h | 5,170.6 | 5,170.6 |
| 72 | 3.1.3.5.1 | Refinar Diagramas de Clases de Diseño | 1.5d | 2017-11-23 | 2017-11-27 | 63 | 2018-02-26 | 2018-02-28 | 1.5d | 91.17d |  | Ingeniero de Casos de Uso; Analista de Sistemas | 24h | 1,421.4 | 1,421.4 |
| 73 | 3.1.3.5.2 | Refinar Diagramas de Colaboración | 1d | 2017-11-30 | 2017-12-04 | 64 | 2018-03-06 | 2018-03-07 | 1d | 87.67d |  | Ingeniero de Casos de Uso; Analista de Sistemas | 16h | 947.6 | 947.6 |
| 74 | 3.1.3.5.3 | Refinar Diagrama de Despliegue | 0.5d | 2017-11-10 | 2017-11-13 | 65 | 2018-02-13 | 2018-02-14 | 0.5d | 98.17d |  | Ingeniero de Casos de Uso; Analista de Sistemas | 8h | 473.8 | 473.8 |
| 75 | 3.1.3.5.4 | Refinar Diagramas de Estado | 1d | 2017-11-09 | 2017-11-10 | 66 | 2018-02-12 | 2018-02-13 | 1d | 98.67d |  | Ingeniero de Casos de Uso; Analista de Sistemas | 16h | 947.6 | 947.6 |
| 76 | 3.1.3.5.5 | Refinar BD | 2d | 2017-12-07 | 2017-12-12 | 70 | 2018-03-12 | 2018-03-15 | 2d | 83.67d |  | Gestor de BD | 16h | 906.4 | 906.4 |
| 77 | 3.1.3.5.6 | Refinar Paquetes de Diseño | 0.5d | 2017-12-05 | 2017-12-06 | 68 | 2018-03-08 | 2018-03-09 | 0.5d | 86.17d |  | Ingeniero de Componentes; Analista de Sistemas | 8h | 473.8 | 473.8 |

| ID | WBS | Task | Duration | Start | Finish | Predecessors | Baseline start | Baseline finish | Baseline duration | Total slack | Free slack | Resources | Work | Cost | Baseline cost |
| --- | --- | --- | --- | --- | --- | --- | --- | --- | --- | --- | --- | --- | --- | --- | --- |
| 78 | 3.2 | **Iteración 2** | 75.33d | 2017-10-24 | 2018-03-23 | 41 | 2018-01-25 | 2018-06-26 | 75.33d | 0d |  |  | 1096h | 58,926.3 | 58,926.3 |
| 79 | 3.2.1 | **Workflow de Requisitos** | 10d | 2017-10-24 | 2017-11-14 |  | 2018-01-25 | 2018-02-15 | 10d | 0d |  |  | 160h | 7,488.1 | 7,488.1 |
| 80 | 3.2.1.1 | **Analizar el Problema** | 0.5d | 2017-10-24 | 2017-10-25 |  | 2018-01-25 | 2018-01-26 | 0.5d | 9.5d |  |  | 4h | 247.2 | 247.2 |
| 81 | 3.2.1.1.1 | Glorario de Términos | 0.5d | 2017-10-24 | 2017-10-25 |  | 2018-01-25 | 2018-01-26 | 0.5d | 9.5d |  | Analista de Sistemas | 4h | 247.2 | 247.2 |
| 82 | 3.2.1.2 | **Definición del Sistema** | 6d | 2017-10-24 | 2017-11-06 |  | 2018-01-25 | 2018-02-07 | 6d | 0d |  |  | 88h | 3,934.6 | 3,934.6 |
| 83 | 3.2.1.2.1 | Detallar Casos de Uso | 5d | 2017-10-24 | 2017-11-02 |  | 2018-01-25 | 2018-02-06 | 5d | 0d |  | Especificador de Casos de Uso [50%]; Implementador [50%] | 40h | 1,957 | 1,957 |
| 84 | 3.2.1.2.2 | Prototipar Casos de Uso | 6d | 2017-10-24 | 2017-11-06 |  | 2018-01-25 | 2018-02-07 | 6d | 4d |  | Diseñador de Interfaz de Usuario | 48h | 1,977.6 | 1,977.6 |
| 85 | 3.2.1.3 | **Definición de Alcance** | 0.5d | 2017-10-24 | 2017-10-25 |  | 2018-01-25 | 2018-01-26 | 0.5d | 9.5d |  |  | 4h | 226.6 | 226.6 |
| 86 | 3.2.1.3.1 | Priorizar Casos de Uso | 0.5d | 2017-10-24 | 2017-10-25 |  | 2018-01-25 | 2018-01-26 | 0.5d | 9.5d |  | Arquitecto | 4h | 226.6 | 226.6 |
| 87 | 3.2.1.4 | **Refinar la Definición del Sistema** | 10d | 2017-10-24 | 2017-11-14 |  | 2018-01-25 | 2018-02-15 | 10d | 0d |  |  | 60h | 2,832.5 | 2,832.5 |
| 88 | 3.2.1.4.1 | Refinar Casos de Uso | 5d | 2017-11-02 | 2017-11-14 | 83 | 2018-02-06 | 2018-02-15 | 5d | 0d |  | Especificador de Casos de Uso | 40h | 1,854 | 1,854 |
| 89 | 3.2.1.4.2 | Refinar Modelo de Caso de Uso | 7.33d | 2017-10-24 | 2017-11-08 |  | 2018-01-25 | 2018-02-09 | 7.33d | 2.17d | 0d | Especificador de Casos de Uso [50%]; Implementador [50%] | 20h | 978.5 | 978.5 |
| 90 | 3.2.1.5 | Administración de Cambios de Requisitos | 0.5d | 2017-11-08 | 2017-11-08 | 89 | 2018-02-09 | 2018-02-09 | 0.5d | 2.17d |  | Analista de Sistemas | 4h | 247.2 | 247.2 |
| 91 | 3.2.2 | **Workflow de Análisis** | 22.33d | 2017-11-14 | 2017-12-27 | 79 | 2018-02-15 | 2018-03-30 | 22.33d | 0d |  |  | 240h | 12,895.6 | 12,895.6 |
| 92 | 3.2.2.1 | **Análisis del Comportamiento** | 22.33d | 2017-11-14 | 2017-12-27 |  | 2018-02-15 | 2018-03-30 | 22.33d | 0d |  |  | 240h | 12,895.6 | 12,895.6 |
| 93 | 3.2.2.1.1 | **Análisis de la Arquitectura** | 7d | 2017-11-14 | 2017-11-28 |  | 2018-02-15 | 2018-03-01 | 7d | 0d |  |  | 56h | 3,172.4 | 3,172.4 |
| 94 | 3.2.2.1.1.1 | Identifica Clases de Análisis | 5d | 2017-11-14 | 2017-11-23 |  | 2018-02-15 | 2018-02-26 | 5d | 0d |  | Arquitecto | 40h | 2,266 | 2,266 |
| 95 | 3.2.2.1.1.2 | Identificar Paquetes de Análisis | 2d | 2017-11-23 | 2017-11-28 | 94 | 2018-02-26 | 2018-03-01 | 2d | 15.33d |  | Arquitecto | 16h | 906.4 | 906.4 |
| 96 | 3.2.2.1.2 | **Análisis de Casos de Uso** | 13.33d | 2017-11-21 | 2017-12-18 |  | 2018-02-22 | 2018-03-21 | 13.33d | 0d |  |  | 112h | 5,768 | 5,768 |
| 97 | 3.2.2.1.2.1 | Diagramas de Clases de Análisis | 10d | 2017-11-21 | 2017-12-12 | 94FS-1d | 2018-02-22 | 2018-03-15 | 10d | 3.33d | 0d | Ingeniero de Casos de Uso | 48h | 2,472 | 2,472 |
| 98 | 3.2.2.1.2.2 | Diagramas de Colaboración | 13.33d | 2017-11-21 | 2017-12-18 | 94FS-1d | 2018-02-22 | 2018-03-21 | 13.33d | 0d |  | Ingeniero de Casos de Uso | 64h | 3,296 | 3,296 |
| 99 | 3.2.2.1.3 | **Análisis de Paquetes** | 1d | 2017-12-18 | 2017-12-20 |  | 2018-03-21 | 2018-03-23 | 1d | 2d |  |  | 8h | 453.2 | 453.2 |
| 100 | 3.2.2.1.3.1 | Paquetes de Análisis | 1d | 2017-12-18 | 2017-12-20 | 97, 98 | 2018-03-21 | 2018-03-23 | 1d | 2d | 0d | Ingeniero de Componentes | 8h | 453.2 | 453.2 |
| 101 | 3.2.2.1.4 | **Análisis de Datos** | 3d | 2017-12-18 | 2017-12-22 |  | 2018-03-21 | 2018-03-28 | 3d | 0d |  |  | 24h | 1,359.6 | 1,359.6 |
| 102 | 3.2.2.1.4.1 | Análisis de la BD | 3d | 2017-12-18 | 2017-12-22 | 97, 98 | 2018-03-21 | 2018-03-28 | 3d | 0d |  | Gestor de BD | 24h | 1,359.6 | 1,359.6 |

| ID | WBS | Task | Duration | Start | Finish | Predecessors | Baseline start | Baseline finish | Baseline duration | Total slack | Free slack | Resources | Work | Cost | Baseline cost |
| --- | --- | --- | --- | --- | --- | --- | --- | --- | --- | --- | --- | --- | --- | --- | --- |
| 103 | 3.2.2.1.5 | **Refinar el Análisis** | 7.33d | 2017-12-13 | 2017-12-27 |  | 2018-03-16 | 2018-03-30 | 7.33d | 0d |  |  | 40h | 2,142.4 | 2,142.4 |
| 104 | 3.2.2.1.5.1 | Refinar Diagramas de Clases de Análisis | 1.67d | 2017-12-13 | 2017-12-15 | 97FS+1d | 2018-03-16 | 2018-03-20 | 1.67d | 5.67d |  | Ingeniero de Casos de Uso | 8h | 412 | 412 |
| 105 | 3.2.2.1.5.2 | Refinar Diagramas de Colaboración | 3.33d | 2017-12-20 | 2017-12-26 | 98FS+1d | 2018-03-23 | 2018-03-29 | 3.33d | 0.67d |  | Ingeniero de Casos de Uso | 16h | 824 | 824 |
| 106 | 3.2.2.1.5.3 | Refinar BD | 1d | 2017-12-26 | 2017-12-27 | 102FS+1d | 2018-03-29 | 2018-03-30 | 1d | 0d |  | Gestor de BD | 8h | 453.2 | 453.2 |
| 107 | 3.2.2.1.5.4 | Refinar Paquetes de Análisis | 1d | 2017-12-21 | 2017-12-22 | 100FS+1d | 2018-03-26 | 2018-03-28 | 1d | 2d |  | Ingeniero de Componentes | 8h | 453.2 | 453.2 |
| 108 | 3.2.3 | **Workflow de Diseño** | 24d | 2017-12-27 | 2018-02-14 | 91 | 2018-03-30 | 2018-05-18 | 24d | 32.33d | 0d |  | 416h | 24,122.6 | 24,122.6 |
| 109 | 3.2.3.1 | **Diseño de la Arquitectura** | 6d | 2017-12-27 | 2018-01-09 |  | 2018-03-30 | 2018-04-12 | 6d | 32.33d |  |  | 72h | 4,449.6 | 4,449.6 |
| 110 | 3.2.3.1.1 | Identifica Clases de Diseño | 6d | 2017-12-27 | 2018-01-09 | 104, 105 | 2018-03-30 | 2018-04-12 | 6d | 32.33d | 0d | Arquitecto | 48h | 2,966.4 | 2,966.4 |
| 111 | 3.2.3.1.2 | Identificar Paquetes de Diseño | 3d | 2017-12-27 | 2018-01-03 | 104, 105 | 2018-03-30 | 2018-04-06 | 3d | 53.33d |  | Arquitecto | 24h | 1,483.2 | 1,483.2 |
| 112 | 3.2.3.2 | **Diseño de Casos de Uso** | 13d | 2018-01-09 | 2018-02-02 |  | 2018-04-12 | 2018-05-09 | 13d | 32.33d |  |  | 216h | 12,236.4 | 12,236.4 |
| 113 | 3.2.3.2.1 | Diagramas de Clases de Diseño | 9d | 2018-01-09 | 2018-01-26 | 110 | 2018-04-12 | 2018-05-01 | 9d | 36.33d | 0d | Ingeniero de Casos de Uso [50%]; Analista de Sistemas [50%] | 72h | 4,078.8 | 4,078.8 |
| 114 | 3.2.3.2.2 | Diagramas de Colaboración | 13d | 2018-01-09 | 2018-02-02 | 110 | 2018-04-12 | 2018-05-09 | 13d | 32.33d | 0d | Ingeniero de Casos de Uso [50%]; Analista de Sistemas [50%] | 104h | 5,891.6 | 5,891.6 |
| 115 | 3.2.3.2.3 | Diagrama de Despliegue | 3d | 2018-01-09 | 2018-01-15 | 110 | 2018-04-12 | 2018-04-18 | 3d | 46.83d | 0d | Ingeniero de Casos de Uso [50%]; Analista de Sistemas [50%] | 24h | 1,359.6 | 1,359.6 |
| 116 | 3.2.3.2.4 | Diagramas de Estado | 2d | 2018-01-09 | 2018-01-12 | 110 | 2018-04-12 | 2018-04-17 | 2d | 47.33d | 0d | Ingeniero de Casos de Uso [50%]; Analista de Sistemas [50%] | 16h | 906.4 | 906.4 |
| 117 | 3.2.3.3 | **Diseño de Paquetes** | 2d | 2018-02-02 | 2018-02-07 |  | 2018-05-09 | 2018-05-11 | 2d | 34.83d |  |  | 16h | 906.4 | 906.4 |
| 118 | 3.2.3.3.1 | Paquetes de Diseño | 2d | 2018-02-02 | 2018-02-07 | 113, 114 | 2018-05-09 | 2018-05-11 | 2d | 34.83d | 0d | Ingeniero de Componentes | 16h | 906.4 | 906.4 |
| 119 | 3.2.3.4 | **Diseño de Datos** | 3d | 2018-02-02 | 2018-02-09 |  | 2018-05-09 | 2018-05-15 | 3d | 32.33d |  |  | 24h | 1,359.6 | 1,359.6 |
| 120 | 3.2.3.4.1 | Diseño de la BD | 3d | 2018-02-02 | 2018-02-09 | 113, 114 | 2018-05-09 | 2018-05-15 | 3d | 32.33d | 0d | Gestor de BD | 24h | 1,359.6 | 1,359.6 |
| 121 | 3.2.3.5 | **Refinar el Diseño** | 16d | 2018-01-12 | 2018-02-14 |  | 2018-04-17 | 2018-05-18 | 16d | 32.33d |  |  | 88h | 5,170.6 | 5,170.6 |
| 122 | 3.2.3.5.1 | Refinar Diagramas de Clases de Diseño | 1.5d | 2018-01-26 | 2018-01-30 | 113 | 2018-05-01 | 2018-05-03 | 1.5d | 39.83d |  | Ingeniero de Casos de Uso; Analista de Sistemas | 24h | 1,421.4 | 1,421.4 |
| 123 | 3.2.3.5.2 | Refinar Diagramas de Colaboración | 1d | 2018-02-02 | 2018-02-06 | 114 | 2018-05-09 | 2018-05-10 | 1d | 36.33d |  | Ingeniero de Casos de Uso; Analista de Sistemas | 16h | 947.6 | 947.6 |
| 124 | 3.2.3.5.3 | Refinar Diagrama de Despliegue | 0.5d | 2018-01-15 | 2018-01-16 | 115 | 2018-04-18 | 2018-04-19 | 0.5d | 46.83d |  | Ingeniero de Casos de Uso; Analista de Sistemas | 8h | 473.8 | 473.8 |
| 125 | 3.2.3.5.4 | Refinar Diagramas de Estado | 1d | 2018-01-12 | 2018-01-15 | 116 | 2018-04-17 | 2018-04-18 | 1d | 47.33d |  | Ingeniero de Casos de Uso; Analista de Sistemas | 16h | 947.6 | 947.6 |
| 126 | 3.2.3.5.5 | Refinar BD | 2d | 2018-02-09 | 2018-02-14 | 120 | 2018-05-15 | 2018-05-18 | 2d | 32.33d |  | Gestor de BD | 16h | 906.4 | 906.4 |
| 127 | 3.2.3.5.6 | Refinar Paquetes de Diseño | 0.5d | 2018-02-07 | 2018-02-08 | 118 | 2018-05-11 | 2018-05-14 | 0.5d | 34.83d |  | Ingeniero de Componentes; Analista de Sistemas | 8h | 473.8 | 473.8 |

| ID | WBS | Task | Duration | Start | Finish | Predecessors | Baseline start | Baseline finish | Baseline duration | Total slack | Free slack | Resources | Work | Cost | Baseline cost |
| --- | --- | --- | --- | --- | --- | --- | --- | --- | --- | --- | --- | --- | --- | --- | --- |
| 128 | 3.2.4 | **Workflow de Implementación y Pruebas** | 19d | 2018-02-14 | 2018-03-23 | 108 | 2018-05-18 | 2018-06-26 | 19d | 32.33d | 0d |  | 280h | 14,420 | 14,420 |
| 129 | 3.2.4.1 | Desarrollo de estructura de aplicación | 15d | 2018-02-20 | 2018-03-21 | 130 | 2018-05-24 | 2018-06-22 | 15d | 32.33d | 0d | Implementador [200%] | 240h | 12,360 | 12,360 |
| 130 | 3.2.4.2 | Planeación de la integración de Sistemas | 2d | 2018-02-15 | 2018-02-20 | 131 | 2018-05-21 | 2018-05-24 | 2d | 32.33d | 0d | Implementador | 16h | 824 | 824 |
| 131 | 3.2.4.3 | Plan de Pruebas | 1d | 2018-02-14 | 2018-02-15 |  | 2018-05-18 | 2018-05-21 | 1d | 32.33d | 0d | Implementador | 8h | 412 | 412 |
| 132 | 3.2.4.4 | Integración de Sistemas | 1d | 2018-03-21 | 2018-03-23 | 129 | 2018-06-22 | 2018-06-26 | 1d | 32.33d |  | Implementador | 8h | 412 | 412 |
| 133 | 3.2.4.5 | Ejecución de Pruebas | 1d | 2018-03-21 | 2018-03-23 | 129 | 2018-06-22 | 2018-06-26 | 1d | 32.33d |  | Implementador | 8h | 412 | 412 |
| 134 | 3.3 | **Iteración 3** | 75.33d | 2017-12-27 | 2018-05-28 | 91 | 2018-03-30 | 2018-08-29 | 75.33d | 0d |  |  | 1096h | 58,926.3 | 58,926.3 |
| 135 | 3.3.1 | **Workflow de Requisitos** | 10d | 2017-12-27 | 2018-01-17 |  | 2018-03-30 | 2018-04-20 | 10d | 0d |  |  | 160h | 7,488.1 | 7,488.1 |
| 136 | 3.3.1.1 | **Analizar el Problema** | 0.5d | 2017-12-27 | 2017-12-28 |  | 2018-03-30 | 2018-04-02 | 0.5d | 9.5d |  |  | 4h | 247.2 | 247.2 |
| 137 | 3.3.1.1.1 | Glorario de Términos | 0.5d | 2017-12-27 | 2017-12-28 |  | 2018-03-30 | 2018-04-02 | 0.5d | 9.5d |  | Analista de Sistemas | 4h | 247.2 | 247.2 |
| 138 | 3.3.1.2 | **Definición del Sistema** | 6d | 2017-12-27 | 2018-01-09 |  | 2018-03-30 | 2018-04-12 | 6d | 0d |  |  | 88h | 3,934.6 | 3,934.6 |
| 139 | 3.3.1.2.1 | Detallar Casos de Uso | 5d | 2017-12-27 | 2018-01-05 |  | 2018-03-30 | 2018-04-11 | 5d | 0d |  | Especificador de Casos de Uso [50%]; Implementador [50%] | 40h | 1,957 | 1,957 |
| 140 | 3.3.1.2.2 | Prototipar Casos de Uso | 6d | 2017-12-27 | 2018-01-09 |  | 2018-03-30 | 2018-04-12 | 6d | 4d |  | Diseñador de Interfaz de Usuario | 48h | 1,977.6 | 1,977.6 |
| 141 | 3.3.1.3 | **Definición de Alcance** | 0.5d | 2017-12-27 | 2017-12-28 |  | 2018-03-30 | 2018-04-02 | 0.5d | 9.5d |  |  | 4h | 226.6 | 226.6 |
| 142 | 3.3.1.3.1 | Priorizar Casos de Uso | 0.5d | 2017-12-27 | 2017-12-28 |  | 2018-03-30 | 2018-04-02 | 0.5d | 9.5d |  | Arquitecto | 4h | 226.6 | 226.6 |
| 143 | 3.3.1.4 | **Refinar la Definición del Sistema** | 10d | 2017-12-27 | 2018-01-17 |  | 2018-03-30 | 2018-04-20 | 10d | 0d |  |  | 60h | 2,832.5 | 2,832.5 |
| 144 | 3.3.1.4.1 | Refinar Casos de Uso | 5d | 2018-01-05 | 2018-01-17 | 139 | 2018-04-11 | 2018-04-20 | 5d | 0d |  | Especificador de Casos de Uso | 40h | 1,854 | 1,854 |
| 145 | 3.3.1.4.2 | Refinar Modelo de Caso de Uso | 7d | 2017-12-27 | 2018-01-10 |  | 2018-03-30 | 2018-04-13 | 7d | 2.5d | 0d | Especificador de Casos de Uso [50%]; Implementador [50%] | 20h | 978.5 | 978.5 |
| 146 | 3.3.1.5 | Administración de Cambios de Requisitos | 0.5d | 2018-01-10 | 2018-01-11 | 145 | 2018-04-13 | 2018-04-16 | 0.5d | 2.5d |  | Analista de Sistemas | 4h | 247.2 | 247.2 |
| 147 | 3.3.2 | **Workflow de Análisis** | 22.33d | 2018-01-17 | 2018-03-01 | 135 | 2018-04-20 | 2018-06-05 | 22.33d | 0d |  |  | 240h | 12,895.6 | 12,895.6 |
| 148 | 3.3.2.1 | **Análisis del Comportamiento** | 22.33d | 2018-01-17 | 2018-03-01 |  | 2018-04-20 | 2018-06-05 | 22.33d | 0d |  |  | 240h | 12,895.6 | 12,895.6 |
| 149 | 3.3.2.1.1 | **Análisis de la Arquitectura** | 7d | 2018-01-17 | 2018-01-31 |  | 2018-04-20 | 2018-05-04 | 7d | 0d |  |  | 56h | 3,172.4 | 3,172.4 |
| 150 | 3.3.2.1.1.1 | Identifica Clases de Análisis | 5d | 2018-01-17 | 2018-01-26 |  | 2018-04-20 | 2018-05-01 | 5d | 0d |  | Arquitecto | 40h | 2,266 | 2,266 |
| 151 | 3.3.2.1.1.2 | Identificar Paquetes de Análisis | 2d | 2018-01-26 | 2018-01-31 | 150 | 2018-05-01 | 2018-05-04 | 2d | 15.33d |  | Arquitecto | 16h | 906.4 | 906.4 |

| ID | WBS | Task | Duration | Start | Finish | Predecessors | Baseline start | Baseline finish | Baseline duration | Total slack | Free slack | Resources | Work | Cost | Baseline cost |
| --- | --- | --- | --- | --- | --- | --- | --- | --- | --- | --- | --- | --- | --- | --- | --- |
| 152 | 3.3.2.1.2 | **Análisis de Casos de Uso** | 13.33d | 2018-01-24 | 2018-02-20 |  | 2018-04-27 | 2018-05-24 | 13.33d | 0d |  |  | 112h | 5,768 | 5,768 |
| 153 | 3.3.2.1.2.1 | Diagramas de Clases de Análisis | 10d | 2018-01-24 | 2018-02-14 | 150FS-1d | 2018-04-27 | 2018-05-18 | 10d | 3.33d | 0d | Ingeniero de Casos de Uso | 48h | 2,472 | 2,472 |
| 154 | 3.3.2.1.2.2 | Diagramas de Colaboración | 13.33d | 2018-01-24 | 2018-02-20 | 150FS-1d | 2018-04-27 | 2018-05-24 | 13.33d | 0d |  | Ingeniero de Casos de Uso | 64h | 3,296 | 3,296 |
| 155 | 3.3.2.1.3 | **Análisis de Paquetes** | 1d | 2018-02-21 | 2018-02-22 |  | 2018-05-25 | 2018-05-28 | 1d | 2d |  |  | 8h | 453.2 | 453.2 |
| 156 | 3.3.2.1.3.1 | Paquetes de Análisis | 1d | 2018-02-21 | 2018-02-22 | 153, 154 | 2018-05-25 | 2018-05-28 | 1d | 2d | 0d | Ingeniero de Componentes | 8h | 453.2 | 453.2 |
| 157 | 3.3.2.1.4 | **Análisis de Datos** | 3d | 2018-02-21 | 2018-02-27 |  | 2018-05-25 | 2018-05-31 | 3d | 0d |  |  | 24h | 1,359.6 | 1,359.6 |
| 158 | 3.3.2.1.4.1 | Análisis de la BD | 3d | 2018-02-21 | 2018-02-27 | 153, 154 | 2018-05-25 | 2018-05-31 | 3d | 0d |  | Gestor de BD | 24h | 1,359.6 | 1,359.6 |
| 159 | 3.3.2.1.5 | **Refinar el Análisis** | 7.33d | 2018-02-15 | 2018-03-01 |  | 2018-05-21 | 2018-06-05 | 7.33d | 0d |  |  | 40h | 2,142.4 | 2,142.4 |
| 160 | 3.3.2.1.5.1 | Refinar Diagramas de Clases de Análisis | 1.67d | 2018-02-15 | 2018-02-20 | 153FS+1d | 2018-05-21 | 2018-05-24 | 1.67d | 5.67d |  | Ingeniero de Casos de Uso | 8h | 412 | 412 |
| 161 | 3.3.2.1.5.2 | Refinar Diagramas de Colaboración | 3.33d | 2018-02-22 | 2018-03-01 | 154FS+1d | 2018-05-28 | 2018-06-04 | 3.33d | 0.67d |  | Ingeniero de Casos de Uso | 16h | 824 | 824 |
| 162 | 3.3.2.1.5.3 | Refinar BD | 1d | 2018-02-28 | 2018-03-01 | 158FS+1d | 2018-06-01 | 2018-06-05 | 1d | 0d |  | Gestor de BD | 8h | 453.2 | 453.2 |
| 163 | 3.3.2.1.5.4 | Refinar Paquetes de Análisis | 1d | 2018-02-23 | 2018-02-27 | 156FS+1d | 2018-05-30 | 2018-05-31 | 1d | 2d |  | Ingeniero de Componentes | 8h | 453.2 | 453.2 |
| 164 | 3.3.3 | **Workflow de Diseño** | 24d | 2018-03-02 | 2018-04-19 | 147 | 2018-06-05 | 2018-07-23 | 24d | 0d |  |  | 416h | 24,122.6 | 24,122.6 |
| 165 | 3.3.3.1 | **Diseño de la Arquitectura** | 6d | 2018-03-02 | 2018-03-14 |  | 2018-06-05 | 2018-06-15 | 6d | 0d |  |  | 72h | 4,449.6 | 4,449.6 |
| 166 | 3.3.3.1.1 | Identifica Clases de Diseño | 6d | 2018-03-02 | 2018-03-14 | 160, 161 | 2018-06-05 | 2018-06-15 | 6d | 0d |  | Arquitecto | 48h | 2,966.4 | 2,966.4 |
| 167 | 3.3.3.1.2 | Identificar Paquetes de Diseño | 3d | 2018-03-02 | 2018-03-08 | 160, 161 | 2018-06-05 | 2018-06-11 | 3d | 21d |  | Arquitecto | 24h | 1,483.2 | 1,483.2 |
| 168 | 3.3.3.2 | **Diseño de Casos de Uso** | 13d | 2018-03-14 | 2018-04-10 |  | 2018-06-15 | 2018-07-12 | 13d | 0d |  |  | 216h | 12,236.4 | 12,236.4 |
| 169 | 3.3.3.2.1 | Diagramas de Clases de Diseño | 9d | 2018-03-14 | 2018-04-02 | 166 | 2018-06-15 | 2018-07-04 | 9d | 4d | 0d | Ingeniero de Casos de Uso [50%]; Analista de Sistemas [50%] | 72h | 4,078.8 | 4,078.8 |
| 170 | 3.3.3.2.2 | Diagramas de Colaboración | 13d | 2018-03-14 | 2018-04-10 | 166 | 2018-06-15 | 2018-07-12 | 13d | 0d |  | Ingeniero de Casos de Uso [50%]; Analista de Sistemas [50%] | 104h | 5,891.6 | 5,891.6 |
| 171 | 3.3.3.2.3 | Diagrama de Despliegue | 3d | 2018-03-14 | 2018-03-20 | 166 | 2018-06-15 | 2018-06-21 | 3d | 14.5d | 0d | Ingeniero de Casos de Uso [50%]; Analista de Sistemas [50%] | 24h | 1,359.6 | 1,359.6 |
| 172 | 3.3.3.2.4 | Diagramas de Estado | 2d | 2018-03-14 | 2018-03-19 | 166 | 2018-06-15 | 2018-06-20 | 2d | 15d | 0d | Ingeniero de Casos de Uso [50%]; Analista de Sistemas [50%] | 16h | 906.4 | 906.4 |
| 173 | 3.3.3.3 | **Diseño de Paquetes** | 2d | 2018-04-10 | 2018-04-12 |  | 2018-07-12 | 2018-07-17 | 2d | 2.5d |  |  | 16h | 906.4 | 906.4 |
| 174 | 3.3.3.3.1 | Paquetes de Diseño | 2d | 2018-04-10 | 2018-04-12 | 169, 170 | 2018-07-12 | 2018-07-17 | 2d | 2.5d | 0d | Ingeniero de Componentes | 16h | 906.4 | 906.4 |
| 175 | 3.3.3.4 | **Diseño de Datos** | 3d | 2018-04-10 | 2018-04-16 |  | 2018-07-12 | 2018-07-18 | 3d | 0d |  |  | 24h | 1,359.6 | 1,359.6 |
| 176 | 3.3.3.4.1 | Diseño de la BD | 3d | 2018-04-10 | 2018-04-16 | 169, 170 | 2018-07-12 | 2018-07-18 | 3d | 0d |  | Gestor de BD | 24h | 1,359.6 | 1,359.6 |

| ID | WBS | Task | Duration | Start | Finish | Predecessors | Baseline start | Baseline finish | Baseline duration | Total slack | Free slack | Resources | Work | Cost | Baseline cost |
| --- | --- | --- | --- | --- | --- | --- | --- | --- | --- | --- | --- | --- | --- | --- | --- |
| 177 | 3.3.3.5 | **Refinar el Diseño** | 16d | 2018-03-19 | 2018-04-19 |  | 2018-06-20 | 2018-07-23 | 16d | 0d |  |  | 88h | 5,170.6 | 5,170.6 |
| 178 | 3.3.3.5.1 | Refinar Diagramas de Clases de Diseño | 1.5d | 2018-04-02 | 2018-04-04 | 169 | 2018-07-04 | 2018-07-06 | 1.5d | 7.5d |  | Ingeniero de Casos de Uso; Analista de Sistemas | 24h | 1,421.4 | 1,421.4 |
| 179 | 3.3.3.5.2 | Refinar Diagramas de Colaboración | 1d | 2018-04-10 | 2018-04-11 | 170 | 2018-07-12 | 2018-07-13 | 1d | 4d |  | Ingeniero de Casos de Uso; Analista de Sistemas | 16h | 947.6 | 947.6 |
| 180 | 3.3.3.5.3 | Refinar Diagrama de Despliegue | 0.5d | 2018-03-21 | 2018-03-21 | 171 | 2018-06-22 | 2018-06-22 | 0.5d | 14.5d |  | Ingeniero de Casos de Uso; Analista de Sistemas | 8h | 473.8 | 473.8 |
| 181 | 3.3.3.5.4 | Refinar Diagramas de Estado | 1d | 2018-03-19 | 2018-03-20 | 172 | 2018-06-20 | 2018-06-21 | 1d | 15d |  | Ingeniero de Casos de Uso; Analista de Sistemas | 16h | 947.6 | 947.6 |
| 182 | 3.3.3.5.5 | Refinar BD | 2d | 2018-04-16 | 2018-04-19 | 176 | 2018-07-18 | 2018-07-23 | 2d | 0d |  | Gestor de BD | 16h | 906.4 | 906.4 |
| 183 | 3.3.3.5.6 | Refinar Paquetes de Diseño | 0.5d | 2018-04-13 | 2018-04-13 | 174 | 2018-07-17 | 2018-07-17 | 0.5d | 2.5d |  | Ingeniero de Componentes; Analista de Sistemas | 8h | 473.8 | 473.8 |
| 184 | 3.3.4 | **Workflow de Implementación y Pruebas** | 19d | 2018-04-19 | 2018-05-28 | 164 | 2018-07-23 | 2018-08-29 | 19d | 0d |  |  | 280h | 14,420 | 14,420 |
| 185 | 3.3.4.1 | Desarrollo de estructura de aplicación | 15d | 2018-04-25 | 2018-05-24 | 186 | 2018-07-27 | 2018-08-28 | 15d | 0d |  | Implementador [200%] | 240h | 12,360 | 12,360 |
| 186 | 3.3.4.2 | Planeación de la integración de Sistemas | 2d | 2018-04-20 | 2018-04-25 | 187 | 2018-07-25 | 2018-07-27 | 2d | 0d |  | Implementador | 16h | 824 | 824 |
| 187 | 3.3.4.3 | Plan de Pruebas | 1d | 2018-04-19 | 2018-04-20 |  | 2018-07-23 | 2018-07-24 | 1d | 0d |  | Implementador | 8h | 412 | 412 |
| 188 | 3.3.4.4 | Integración de Sistemas | 1d | 2018-05-25 | 2018-05-28 | 185 | 2018-08-28 | 2018-08-29 | 1d | 0d |  | Implementador | 8h | 412 | 412 |
| 189 | 3.3.4.5 | Ejecución de Pruebas | 1d | 2018-05-25 | 2018-05-28 | 185 | 2018-08-28 | 2018-08-29 | 1d | 0d |  | Implementador | 8h | 412 | 412 |
| 190 | 4 | **Fase de Construcción** | 97.67d | 2018-05-28 | 2018-12-07 | 27 | 2018-08-29 | 2019-03-13 | 97.67d | 0d |  |  | 2032h | 110,364.5 | 110,364.5 |
| 191 | 4.1 | **Iteración 4** | 75.33d | 2018-05-28 | 2018-10-25 | 147 | 2018-08-29 | 2019-01-28 | 75.33d | 0d |  |  | 1096h | 58,926.3 | 58,926.3 |
| 192 | 4.1.1 | **Workflow de Requisitos** | 10d | 2018-05-28 | 2018-06-15 |  | 2018-08-29 | 2018-09-18 | 10d | 0d |  |  | 160h | 7,488.1 | 7,488.1 |
| 193 | 4.1.1.1 | **Analizar el Problema** | 0.5d | 2018-05-28 | 2018-05-29 |  | 2018-08-29 | 2018-08-30 | 0.5d | 9.5d |  |  | 4h | 247.2 | 247.2 |
| 194 | 4.1.1.1.1 | Glorario de Términos | 0.5d | 2018-05-28 | 2018-05-29 |  | 2018-08-29 | 2018-08-30 | 0.5d | 9.5d |  | Analista de Sistemas | 4h | 247.2 | 247.2 |
| 195 | 4.1.1.2 | **Definición del Sistema** | 6d | 2018-05-28 | 2018-06-07 |  | 2018-08-29 | 2018-09-11 | 6d | 0d |  |  | 88h | 3,934.6 | 3,934.6 |
| 196 | 4.1.1.2.1 | Detallar Casos de Uso | 5d | 2018-05-28 | 2018-06-06 |  | 2018-08-29 | 2018-09-07 | 5d | 0d |  | Especificador de Casos de Uso [50%]; Implementador [50%] | 40h | 1,957 | 1,957 |
| 197 | 4.1.1.2.2 | Prototipar Casos de Uso | 6d | 2018-05-28 | 2018-06-07 |  | 2018-08-29 | 2018-09-11 | 6d | 4d |  | Diseñador de Interfaz de Usuario | 48h | 1,977.6 | 1,977.6 |
| 198 | 4.1.1.3 | **Definición de Alcance** | 0.5d | 2018-05-28 | 2018-05-29 |  | 2018-08-29 | 2018-08-30 | 0.5d | 9.5d |  |  | 4h | 226.6 | 226.6 |
| 199 | 4.1.1.3.1 | Priorizar Casos de Uso | 0.5d | 2018-05-28 | 2018-05-29 |  | 2018-08-29 | 2018-08-30 | 0.5d | 9.5d |  | Arquitecto | 4h | 226.6 | 226.6 |
| 200 | 4.1.1.4 | **Refinar la Definición del Sistema** | 10d | 2018-05-28 | 2018-06-15 |  | 2018-08-29 | 2018-09-18 | 10d | 0d |  |  | 60h | 2,832.5 | 2,832.5 |
| 201 | 4.1.1.4.1 | Refinar Casos de Uso | 5d | 2018-06-06 | 2018-06-15 | 196 | 2018-09-07 | 2018-09-18 | 5d | 0d |  | Especificador de Casos de Uso | 40h | 1,854 | 1,854 |
| 202 | 4.1.1.4.2 | Refinar Modelo de Caso de Uso | 7.08d | 2018-05-28 | 2018-06-11 |  | 2018-08-29 | 2018-09-12 | 7.08d | 2.42d | 0d | Especificador de Casos de Uso [50%]; Implementador [50%] | 20h | 978.5 | 978.5 |
| 203 | 4.1.1.5 | Administración de Cambios de Requisitos | 0.5d | 2018-06-11 | 2018-06-12 | 202 | 2018-09-12 | 2018-09-13 | 0.5d | 2.42d |  | Analista de Sistemas | 4h | 247.2 | 247.2 |

| ID | WBS | Task | Duration | Start | Finish | Predecessors | Baseline start | Baseline finish | Baseline duration | Total slack | Free slack | Resources | Work | Cost | Baseline cost |
| --- | --- | --- | --- | --- | --- | --- | --- | --- | --- | --- | --- | --- | --- | --- | --- |
| 204 | 4.1.2 | **Workflow de Análisis** | 22.33d | 2018-06-15 | 2018-07-31 | 192 | 2018-09-19 | 2018-11-01 | 22.33d | 0d |  |  | 240h | 12,895.6 | 12,895.6 |
| 205 | 4.1.2.1 | **Análisis del Comportamiento** | 22.33d | 2018-06-15 | 2018-07-31 |  | 2018-09-19 | 2018-11-01 | 22.33d | 0d |  |  | 240h | 12,895.6 | 12,895.6 |
| 206 | 4.1.2.1.1 | **Análisis de la Arquitectura** | 7d | 2018-06-15 | 2018-06-29 |  | 2018-09-19 | 2018-10-02 | 7d | 0d |  |  | 56h | 3,172.4 | 3,172.4 |
| 207 | 4.1.2.1.1.1 | Identifica Clases de Análisis | 5d | 2018-06-15 | 2018-06-26 |  | 2018-09-19 | 2018-09-27 | 5d | 0d |  | Arquitecto | 40h | 2,266 | 2,266 |
| 208 | 4.1.2.1.1.2 | Identificar Paquetes de Análisis | 2d | 2018-06-27 | 2018-06-29 | 207 | 2018-09-28 | 2018-10-02 | 2d | 15.33d |  | Arquitecto | 16h | 906.4 | 906.4 |
| 209 | 4.1.2.1.2 | **Análisis de Casos de Uso** | 13.33d | 2018-06-25 | 2018-07-20 |  | 2018-09-26 | 2018-10-23 | 13.33d | 0d |  |  | 112h | 5,768 | 5,768 |
| 210 | 4.1.2.1.2.1 | Diagramas de Clases de Análisis | 10d | 2018-06-25 | 2018-07-13 | 207FS-1d | 2018-09-26 | 2018-10-16 | 10d | 3.33d | 0d | Ingeniero de Casos de Uso | 48h | 2,472 | 2,472 |
| 211 | 4.1.2.1.2.2 | Diagramas de Colaboración | 13.33d | 2018-06-25 | 2018-07-20 | 207FS-1d | 2018-09-26 | 2018-10-23 | 13.33d | 0d |  | Ingeniero de Casos de Uso | 64h | 3,296 | 3,296 |
| 212 | 4.1.2.1.3 | **Análisis de Paquetes** | 1d | 2018-07-20 | 2018-07-24 |  | 2018-10-23 | 2018-10-25 | 1d | 2d |  |  | 8h | 453.2 | 453.2 |
| 213 | 4.1.2.1.3.1 | Paquetes de Análisis | 1d | 2018-07-20 | 2018-07-24 | 210, 211 | 2018-10-23 | 2018-10-25 | 1d | 2d | 0d | Ingeniero de Componentes | 8h | 453.2 | 453.2 |
| 214 | 4.1.2.1.4 | **Análisis de Datos** | 3d | 2018-07-20 | 2018-07-26 |  | 2018-10-23 | 2018-10-30 | 3d | 0d |  |  | 24h | 1,359.6 | 1,359.6 |
| 215 | 4.1.2.1.4.1 | Análisis de la BD | 3d | 2018-07-20 | 2018-07-26 | 210, 211 | 2018-10-23 | 2018-10-30 | 3d | 0d |  | Gestor de BD | 24h | 1,359.6 | 1,359.6 |
| 216 | 4.1.2.1.5 | **Refinar el Análisis** | 7.33d | 2018-07-17 | 2018-07-31 |  | 2018-10-18 | 2018-11-01 | 7.33d | 0d |  |  | 40h | 2,142.4 | 2,142.4 |
| 217 | 4.1.2.1.5.1 | Refinar Diagramas de Clases de Análisis | 1.67d | 2018-07-17 | 2018-07-19 | 210FS+1d | 2018-10-18 | 2018-10-22 | 1.67d | 5.67d |  | Ingeniero de Casos de Uso | 8h | 412 | 412 |
| 218 | 4.1.2.1.5.2 | Refinar Diagramas de Colaboración | 3.33d | 2018-07-24 | 2018-07-30 | 211FS+1d | 2018-10-25 | 2018-10-31 | 3.33d | 0.67d |  | Ingeniero de Casos de Uso | 16h | 824 | 824 |
| 219 | 4.1.2.1.5.3 | Refinar BD | 1d | 2018-07-30 | 2018-07-31 | 215FS+1d | 2018-10-31 | 2018-11-01 | 1d | 0d |  | Gestor de BD | 8h | 453.2 | 453.2 |
| 220 | 4.1.2.1.5.4 | Refinar Paquetes de Análisis | 1d | 2018-07-25 | 2018-07-26 | 213FS+1d | 2018-10-26 | 2018-10-30 | 1d | 2d |  | Ingeniero de Componentes | 8h | 453.2 | 453.2 |
| 221 | 4.1.3 | **Workflow de Diseño** | 24d | 2018-07-31 | 2018-09-18 | 204 | 2018-11-01 | 2018-12-20 | 24d | 27.75d | 0d |  | 416h | 24,122.6 | 24,122.6 |
| 222 | 4.1.3.1 | **Diseño de la Arquitectura** | 6d | 2018-07-31 | 2018-08-13 |  | 2018-11-01 | 2018-11-14 | 6d | 27.75d |  |  | 72h | 4,449.6 | 4,449.6 |
| 223 | 4.1.3.1.1 | Identifica Clases de Diseño | 6d | 2018-07-31 | 2018-08-13 | 217, 218 | 2018-11-01 | 2018-11-14 | 6d | 27.75d | 0d | Arquitecto | 48h | 2,966.4 | 2,966.4 |
| 224 | 4.1.3.1.2 | Identificar Paquetes de Diseño | 3d | 2018-07-31 | 2018-08-07 | 217, 218 | 2018-11-01 | 2018-11-08 | 3d | 48.75d |  | Arquitecto | 24h | 1,483.2 | 1,483.2 |
| 225 | 4.1.3.2 | **Diseño de Casos de Uso** | 13d | 2018-08-13 | 2018-09-06 |  | 2018-11-14 | 2018-12-11 | 13d | 27.75d |  |  | 216h | 12,236.4 | 12,236.4 |
| 226 | 4.1.3.2.1 | Diagramas de Clases de Diseño | 9d | 2018-08-13 | 2018-08-30 | 223 | 2018-11-14 | 2018-12-03 | 9d | 31.75d | 0d | Ingeniero de Casos de Uso [50%]; Analista de Sistemas [50%] | 72h | 4,078.8 | 4,078.8 |
| 227 | 4.1.3.2.2 | Diagramas de Colaboración | 13d | 2018-08-13 | 2018-09-06 | 223 | 2018-11-14 | 2018-12-11 | 13d | 27.75d | 0d | Ingeniero de Casos de Uso [50%]; Analista de Sistemas [50%] | 104h | 5,891.6 | 5,891.6 |
| 228 | 4.1.3.2.3 | Diagrama de Despliegue | 3d | 2018-08-13 | 2018-08-17 | 223 | 2018-11-14 | 2018-11-20 | 3d | 42.25d | 0d | Ingeniero de Casos de Uso [50%]; Analista de Sistemas [50%] | 24h | 1,359.6 | 1,359.6 |
| 229 | 4.1.3.2.4 | Diagramas de Estado | 2d | 2018-08-13 | 2018-08-16 | 223 | 2018-11-14 | 2018-11-19 | 2d | 42.75d | 0d | Ingeniero de Casos de Uso [50%]; Analista de Sistemas [50%] | 16h | 906.4 | 906.4 |

| ID | WBS | Task | Duration | Start | Finish | Predecessors | Baseline start | Baseline finish | Baseline duration | Total slack | Free slack | Resources | Work | Cost | Baseline cost |
| --- | --- | --- | --- | --- | --- | --- | --- | --- | --- | --- | --- | --- | --- | --- | --- |
| 230 | 4.1.3.3 | **Diseño de Paquetes** | 2d | 2018-09-06 | 2018-09-11 |  | 2018-12-11 | 2018-12-13 | 2d | 30.25d |  |  | 16h | 906.4 | 906.4 |
| 231 | 4.1.3.3.1 | Paquetes de Diseño | 2d | 2018-09-06 | 2018-09-11 | 226, 227 | 2018-12-11 | 2018-12-13 | 2d | 30.25d | 0d | Ingeniero de Componentes | 16h | 906.4 | 906.4 |
| 232 | 4.1.3.4 | **Diseño de Datos** | 3d | 2018-09-06 | 2018-09-13 |  | 2018-12-11 | 2018-12-17 | 3d | 27.75d |  |  | 24h | 1,359.6 | 1,359.6 |
| 233 | 4.1.3.4.1 | Diseño de la BD | 3d | 2018-09-06 | 2018-09-13 | 226, 227 | 2018-12-11 | 2018-12-17 | 3d | 27.75d | 0d | Gestor de BD | 24h | 1,359.6 | 1,359.6 |
| 234 | 4.1.3.5 | **Refinar el Diseño** | 16d | 2018-08-16 | 2018-09-18 |  | 2018-11-19 | 2018-12-20 | 16d | 27.75d |  |  | 88h | 5,170.6 | 5,170.6 |
| 235 | 4.1.3.5.1 | Refinar Diagramas de Clases de Diseño | 1.5d | 2018-08-30 | 2018-09-03 | 226 | 2018-12-03 | 2018-12-05 | 1.5d | 35.25d |  | Ingeniero de Casos de Uso; Analista de Sistemas | 24h | 1,421.4 | 1,421.4 |
| 236 | 4.1.3.5.2 | Refinar Diagramas de Colaboración | 1d | 2018-09-06 | 2018-09-10 | 227 | 2018-12-11 | 2018-12-12 | 1d | 31.75d |  | Ingeniero de Casos de Uso; Analista de Sistemas | 16h | 947.6 | 947.6 |
| 237 | 4.1.3.5.3 | Refinar Diagrama de Despliegue | 0.5d | 2018-08-17 | 2018-08-20 | 228 | 2018-11-20 | 2018-11-21 | 0.5d | 42.25d |  | Ingeniero de Casos de Uso; Analista de Sistemas | 8h | 473.8 | 473.8 |
| 238 | 4.1.3.5.4 | Refinar Diagramas de Estado | 1d | 2018-08-16 | 2018-08-17 | 229 | 2018-11-19 | 2018-11-20 | 1d | 42.75d |  | Ingeniero de Casos de Uso; Analista de Sistemas | 16h | 947.6 | 947.6 |
| 239 | 4.1.3.5.5 | Refinar BD | 2d | 2018-09-13 | 2018-09-18 | 233 | 2018-12-17 | 2018-12-20 | 2d | 27.75d |  | Gestor de BD | 16h | 906.4 | 906.4 |
| 240 | 4.1.3.5.6 | Refinar Paquetes de Diseño | 0.5d | 2018-09-11 | 2018-09-12 | 231 | 2018-12-13 | 2018-12-14 | 0.5d | 30.25d |  | Ingeniero de Componentes; Analista de Sistemas | 8h | 473.8 | 473.8 |
| 241 | 4.1.4 | **Workflow de Implementación y Pruebas** | 19d | 2018-09-18 | 2018-10-25 | 221 | 2018-12-20 | 2019-01-28 | 19d | 27.75d | 0d |  | 280h | 14,420 | 14,420 |
| 242 | 4.1.4.1 | Desarrollo de estructura de aplicación | 15d | 2018-09-24 | 2018-10-23 | 243 | 2018-12-26 | 2019-01-24 | 15d | 27.75d | 0d | Implementador [200%] | 240h | 12,360 | 12,360 |
| 243 | 4.1.4.2 | Planeación de la integración de Sistemas | 2d | 2018-09-19 | 2018-09-24 | 244 | 2018-12-21 | 2018-12-26 | 2d | 27.75d | 0d | Implementador | 16h | 824 | 824 |
| 244 | 4.1.4.3 | Plan de Pruebas | 1d | 2018-09-18 | 2018-09-19 |  | 2018-12-20 | 2018-12-21 | 1d | 27.75d | 0d | Implementador | 8h | 412 | 412 |
| 245 | 4.1.4.4 | Integración de Sistemas | 1d | 2018-10-23 | 2018-10-25 | 242 | 2019-01-24 | 2019-01-28 | 1d | 27.75d |  | Implementador | 8h | 412 | 412 |
| 246 | 4.1.4.5 | Ejecución de Pruebas | 1d | 2018-10-23 | 2018-10-25 | 242 | 2019-01-24 | 2019-01-28 | 1d | 27.75d |  | Implementador | 8h | 412 | 412 |
| 247 | 4.2 | **Iteración 5** | 65.33d | 2018-07-31 | 2018-12-07 | 204 | 2018-11-01 | 2019-03-13 | 65.33d | 0d |  |  | 936h | 51,438.2 | 51,438.2 |
| 248 | 4.2.1 | **Workflow de Análisis** | 22.33d | 2018-07-31 | 2018-09-13 |  | 2018-11-01 | 2018-12-17 | 22.33d | 0d |  |  | 240h | 12,895.6 | 12,895.6 |
| 249 | 4.2.1.1 | **Análisis del Comportamiento** | 22.33d | 2018-07-31 | 2018-09-13 |  | 2018-11-01 | 2018-12-17 | 22.33d | 0d |  |  | 240h | 12,895.6 | 12,895.6 |
| 250 | 4.2.1.1.1 | **Análisis de la Arquitectura** | 7d | 2018-07-31 | 2018-08-14 |  | 2018-11-01 | 2018-11-15 | 7d | 0d |  |  | 56h | 3,172.4 | 3,172.4 |
| 251 | 4.2.1.1.1.1 | Identifica Clases de Análisis | 5d | 2018-07-31 | 2018-08-09 |  | 2018-11-01 | 2018-11-13 | 5d | 0d |  | Arquitecto | 40h | 2,266 | 2,266 |
| 252 | 4.2.1.1.1.2 | Identificar Paquetes de Análisis | 2d | 2018-08-09 | 2018-08-14 | 251 | 2018-11-13 | 2018-11-15 | 2d | 15.33d |  | Arquitecto | 16h | 906.4 | 906.4 |
| 253 | 4.2.1.1.2 | **Análisis de Casos de Uso** | 13.33d | 2018-08-08 | 2018-09-04 |  | 2018-11-09 | 2018-12-06 | 13.33d | 0d |  |  | 112h | 5,768 | 5,768 |
| 254 | 4.2.1.1.2.1 | Diagramas de Clases de Análisis | 10d | 2018-08-08 | 2018-08-28 | 251FS-1d | 2018-11-09 | 2018-11-29 | 10d | 3.33d | 0d | Ingeniero de Casos de Uso | 48h | 2,472 | 2,472 |
| 255 | 4.2.1.1.2.2 | Diagramas de Colaboración | 13.33d | 2018-08-08 | 2018-09-04 | 251FS-1d | 2018-11-09 | 2018-12-06 | 13.33d | 0d |  | Ingeniero de Casos de Uso | 64h | 3,296 | 3,296 |

| ID | WBS | Task | Duration | Start | Finish | Predecessors | Baseline start | Baseline finish | Baseline duration | Total slack | Free slack | Resources | Work | Cost | Baseline cost |
| --- | --- | --- | --- | --- | --- | --- | --- | --- | --- | --- | --- | --- | --- | --- | --- |
| 256 | 4.2.1.1.3 | **Análisis de Paquetes** | 1d | 2018-09-04 | 2018-09-05 |  | 2018-12-06 | 2018-12-07 | 1d | 2d |  |  | 8h | 453.2 | 453.2 |
| 257 | 4.2.1.1.3.1 | Paquetes de Análisis | 1d | 2018-09-04 | 2018-09-05 | 254, 255 | 2018-12-06 | 2018-12-07 | 1d | 2d | 0d | Ingeniero de Componentes | 8h | 453.2 | 453.2 |
| 258 | 4.2.1.1.4 | **Análisis de Datos** | 3d | 2018-09-04 | 2018-09-10 |  | 2018-12-06 | 2018-12-12 | 3d | 0d |  |  | 24h | 1,359.6 | 1,359.6 |
| 259 | 4.2.1.1.4.1 | Análisis de la BD | 3d | 2018-09-04 | 2018-09-10 | 254, 255 | 2018-12-06 | 2018-12-12 | 3d | 0d |  | Gestor de BD | 24h | 1,359.6 | 1,359.6 |
| 260 | 4.2.1.1.5 | **Refinar el Análisis** | 7.33d | 2018-08-30 | 2018-09-13 |  | 2018-12-03 | 2018-12-17 | 7.33d | 0d |  |  | 40h | 2,142.4 | 2,142.4 |
| 261 | 4.2.1.1.5.1 | Refinar Diagramas de Clases de Análisis | 1.67d | 2018-08-30 | 2018-09-03 | 254FS+1d | 2018-12-03 | 2018-12-05 | 1.67d | 5.67d |  | Ingeniero de Casos de Uso | 8h | 412 | 412 |
| 262 | 4.2.1.1.5.2 | Refinar Diagramas de Colaboración | 3.33d | 2018-09-05 | 2018-09-12 | 255FS+1d | 2018-12-07 | 2018-12-14 | 3.33d | 0.67d |  | Ingeniero de Casos de Uso | 16h | 824 | 824 |
| 263 | 4.2.1.1.5.3 | Refinar BD | 1d | 2018-09-12 | 2018-09-13 | 259FS+1d | 2018-12-14 | 2018-12-17 | 1d | 0d |  | Gestor de BD | 8h | 453.2 | 453.2 |
| 264 | 4.2.1.1.5.4 | Refinar Paquetes de Análisis | 1d | 2018-09-07 | 2018-09-10 | 257FS+1d | 2018-12-11 | 2018-12-12 | 1d | 2d |  | Ingeniero de Componentes | 8h | 453.2 | 453.2 |
| 265 | 4.2.2 | **Workflow de Diseño** | 24d | 2018-09-13 | 2018-10-31 | 248 | 2018-12-17 | 2019-02-01 | 24d | 0d |  |  | 416h | 24,122.6 | 24,122.6 |
| 266 | 4.2.2.1 | **Diseño de la Arquitectura** | 6d | 2018-09-13 | 2018-09-26 |  | 2018-12-17 | 2018-12-28 | 6d | 0d |  |  | 72h | 4,449.6 | 4,449.6 |
| 267 | 4.2.2.1.1 | Identifica Clases de Diseño | 6d | 2018-09-13 | 2018-09-26 | 261, 262 | 2018-12-17 | 2018-12-28 | 6d | 0d |  | Arquitecto | 48h | 2,966.4 | 2,966.4 |
| 268 | 4.2.2.1.2 | Identificar Paquetes de Diseño | 3d | 2018-09-13 | 2018-09-19 | 261, 262 | 2018-12-17 | 2018-12-21 | 3d | 21d |  | Arquitecto | 24h | 1,483.2 | 1,483.2 |
| 269 | 4.2.2.2 | **Diseño de Casos de Uso** | 13d | 2018-09-26 | 2018-10-22 |  | 2018-12-28 | 2019-01-23 | 13d | 0d |  |  | 216h | 12,236.4 | 12,236.4 |
| 270 | 4.2.2.2.1 | Diagramas de Clases de Diseño | 9d | 2018-09-26 | 2018-10-12 | 267 | 2018-12-28 | 2019-01-16 | 9d | 4d | 0d | Ingeniero de Casos de Uso [50%]; Analista de Sistemas [50%] | 72h | 4,078.8 | 4,078.8 |
| 271 | 4.2.2.2.2 | Diagramas de Colaboración | 13d | 2018-09-26 | 2018-10-22 | 267 | 2018-12-28 | 2019-01-23 | 13d | 0d |  | Ingeniero de Casos de Uso [50%]; Analista de Sistemas [50%] | 104h | 5,891.6 | 5,891.6 |
| 272 | 4.2.2.2.3 | Diagrama de Despliegue | 3d | 2018-09-26 | 2018-10-02 | 267 | 2018-12-28 | 2019-01-03 | 3d | 14.5d | 0d | Ingeniero de Casos de Uso [50%]; Analista de Sistemas [50%] | 24h | 1,359.6 | 1,359.6 |
| 273 | 4.2.2.2.4 | Diagramas de Estado | 2d | 2018-09-26 | 2018-09-28 | 267 | 2018-12-28 | 2019-01-02 | 2d | 15d | 0d | Ingeniero de Casos de Uso [50%]; Analista de Sistemas [50%] | 16h | 906.4 | 906.4 |
| 274 | 4.2.2.3 | **Diseño de Paquetes** | 2d | 2018-10-22 | 2018-10-25 |  | 2019-01-23 | 2019-01-28 | 2d | 2.5d |  |  | 16h | 906.4 | 906.4 |
| 275 | 4.2.2.3.1 | Paquetes de Diseño | 2d | 2018-10-22 | 2018-10-25 | 270, 271 | 2019-01-23 | 2019-01-28 | 2d | 2.5d | 0d | Ingeniero de Componentes | 16h | 906.4 | 906.4 |
| 276 | 4.2.2.4 | **Diseño de Datos** | 3d | 2018-10-22 | 2018-10-26 |  | 2019-01-23 | 2019-01-30 | 3d | 0d |  |  | 24h | 1,359.6 | 1,359.6 |
| 277 | 4.2.2.4.1 | Diseño de la BD | 3d | 2018-10-22 | 2018-10-26 | 270, 271 | 2019-01-23 | 2019-01-30 | 3d | 0d |  | Gestor de BD | 24h | 1,359.6 | 1,359.6 |
| 278 | 4.2.2.5 | **Refinar el Diseño** | 16d | 2018-09-28 | 2018-10-31 |  | 2019-01-02 | 2019-02-01 | 16d | 0d |  |  | 88h | 5,170.6 | 5,170.6 |
| 279 | 4.2.2.5.1 | Refinar Diagramas de Clases de Diseño | 1.5d | 2018-10-12 | 2018-10-17 | 270 | 2019-01-16 | 2019-01-18 | 1.5d | 7.5d |  | Ingeniero de Casos de Uso; Analista de Sistemas | 24h | 1,421.4 | 1,421.4 |
| 280 | 4.2.2.5.2 | Refinar Diagramas de Colaboración | 1d | 2018-10-22 | 2018-10-24 | 271 | 2019-01-23 | 2019-01-25 | 1d | 4d |  | Ingeniero de Casos de Uso; Analista de Sistemas | 16h | 947.6 | 947.6 |
| 281 | 4.2.2.5.3 | Refinar Diagrama de Despliegue | 0.5d | 2018-10-02 | 2018-10-03 | 272 | 2019-01-03 | 2019-01-04 | 0.5d | 14.5d |  | Ingeniero de Casos de Uso; Analista de Sistemas | 8h | 473.8 | 473.8 |
| 282 | 4.2.2.5.4 | Refinar Diagramas de Estado | 1d | 2018-09-28 | 2018-10-02 | 273 | 2019-01-02 | 2019-01-03 | 1d | 15d |  | Ingeniero de Casos de Uso; Analista de Sistemas | 16h | 947.6 | 947.6 |
| 283 | 4.2.2.5.5 | Refinar BD | 2d | 2018-10-26 | 2018-10-31 | 277 | 2019-01-30 | 2019-02-01 | 2d | 0d |  | Gestor de BD | 16h | 906.4 | 906.4 |
| 284 | 4.2.2.5.6 | Refinar Paquetes de Diseño | 0.5d | 2018-10-25 | 2018-10-26 | 275 | 2019-01-28 | 2019-01-29 | 0.5d | 2.5d |  | Ingeniero de Componentes; Analista de Sistemas | 8h | 473.8 | 473.8 |

| ID | WBS | Task | Duration | Start | Finish | Predecessors | Baseline start | Baseline finish | Baseline duration | Total slack | Free slack | Resources | Work | Cost | Baseline cost |
| --- | --- | --- | --- | --- | --- | --- | --- | --- | --- | --- | --- | --- | --- | --- | --- |
| 285 | 4.2.3 | **Workflow de Implementación y Pruebas** | 19d | 2018-10-31 | 2018-12-07 | 265 | 2019-02-01 | 2019-03-13 | 19d | 0d |  |  | 280h | 14,420 | 14,420 |
| 286 | 4.2.3.1 | Desarrollo de estructura de aplicación | 15d | 2018-11-07 | 2018-12-06 | 287 | 2019-02-08 | 2019-03-11 | 15d | 0d |  | Implementador [200%] | 240h | 12,360 | 12,360 |
| 287 | 4.2.3.2 | Planeación de la integración de Sistemas | 2d | 2018-11-02 | 2018-11-07 | 288 | 2019-02-05 | 2019-02-08 | 2d | 0d |  | Implementador | 16h | 824 | 824 |
| 288 | 4.2.3.3 | Plan de Pruebas | 1d | 2018-10-31 | 2018-11-02 |  | 2019-02-01 | 2019-02-05 | 1d | 0d |  | Implementador | 8h | 412 | 412 |
| 289 | 4.2.3.4 | Integración de Sistemas | 1d | 2018-12-06 | 2018-12-07 | 286 | 2019-03-11 | 2019-03-13 | 1d | 0d |  | Implementador | 8h | 412 | 412 |
| 290 | 4.2.3.5 | Ejecución de Pruebas | 1d | 2018-12-06 | 2018-12-07 | 286 | 2019-03-11 | 2019-03-13 | 1d | 0d |  | Implementador | 8h | 412 | 412 |
| 291 | 5 | **Fase de Transición** | 5.42d? | 2018-12-07 | 2018-12-19 | 247 | 2019-03-13 | 2019-03-26 | 6.75d | 0d |  |  | 72h | 5,191.2 | 5,191.2 |
| 292 | 5.1 | Instalación del Software | 1d | 2018-12-07 | 2018-12-10 |  | 2019-03-22 | 2019-03-25 | 1d | 4.67d |  | Administrador de Proyecto | 8h | 576.8 | 576.8 |
| 293 | 5.2 | Migración | 4d | 2018-12-07 | 2018-12-17 |  | 2019-03-13 | 2019-03-19 | 4d | 1.42d |  | Administrador de Proyecto | 32h | 2,307.2 | 2,307.2 |
| 294 | 5.3 | Capacitación | 3d | 2018-12-07 | 2018-12-19 |  | 2019-03-19 | 2019-03-22 | 3d | 0d |  | Administrador de Proyecto | 24h | 1,730.4 | 1,730.4 |
| 295 | 5.4 | Comprobación de Aceptación | 1d | 2018-12-07 | 2018-12-11 |  | 2019-03-25 | 2019-03-26 | 1d | 4.08d | 0d | Administrador de Proyecto | 8h | 576.8 | 576.8 |
